# Project Schedule

How a schedule from MS Project changed from version to version. A marks actual dates.

## Version 1 (saved 2026-09-30)

Note of the change: Add Final SRS of Phase 2: System Architecture

| ID | Task | Duration | Start | Finish | Predecessors | Constraint |
| --- | --- | --- | --- | --- | --- | --- |
| 1 | PHASE 1: Planning and Requirement Analysis (20%) | 15d | 2026-08-17 | 2026-09-04 |  |  |
| 2 | Module introduction & group formation | 5d | 2026-08-17 | 2026-08-21 |  |  |
| 3 | Stakeholder engagement & problem identification | 5d | 2026-08-17 | 2026-08-21 |  |  |
| 4 | Current-process analysis & requirements gathering | 5d | 2026-08-17 | 2026-08-21 | 3 | start no earlier than 2026-08-17 |
| 5 | Draft Initial SRS | 3d | 2026-08-20 | 2026-08-22 | 4 |  |
| 6 | Formal stakeholder interview | 1d | 2026-08-24 | 2026-08-24 | 3 |  |
| 7 | Update SRS with real interview findings | 1d | 2026-08-25 | 2026-08-25 | 6 |  |
| 8 | Set up GitHub repository | 1d | 2026-08-22 | 2026-08-22 |  |  |
| 9 | Set up Supabase project | 0.5d | 2026-08-26 | 2026-08-26 |  |  |
| 10 | Milestone: Unit 1 Progress Checkpoint submitted | 0d | 2026-08-26 | 2026-08-26 | 7, 8, 9 |  |
| 11 | Feasibility study (technical, operational, economic, schedule, legal, ethical) | 2d | 2026-08-26 | 2026-08-27 | 7 |  |
| 12 | Risk register (8-12 risks) & mitigation planning | 3d | 2026-08-26 | 2026-08-28 | 7 |  |
| 13 | Baseline Microsoft Project schedule | 1d | 2026-08-27 | 2026-08-27 | 11, 12 |  |
| 14 | Compile Phase 1 portfolio (SRS + feasibility + risk + reflection) | 2d | 2026-08-27 | 2026-08-28 | 11, 12, 13 |  |
| 15 | Group Phase 1 reflection | 1d | 2026-08-31 | 2026-08-31 | 14 |  |
| 16 | Milestone: Phase 1 presentation - Assessment 1 (20%) | 0d | 2026-09-01 | 2026-09-01 | 14, 15 |  |
| 17 | PHASE 2: System Architecture and Design (30%) | 15d | 2026-09-07 | 2026-09-25 | 1 |  |
| 18 | System architecture linking Flutter, ASP.NET & Supabase | 3d | 2026-09-01 | 2026-09-03 | 16 |  |
| 19 | UML diagrams & Entity Relationship Diagram | 5d | 2026-09-07 | 2026-09-11 | 16 |  |
| 20 | Interface prototypes (Flutter & ASP.NET) | 5d | 2026-09-14 | 2026-09-18 | 18, 19 |  |
| 21 | Supabase database & access-control design | 3d | 2026-09-14 | 2026-09-16 | 18 |  |
| 22 | Stakeholder feedback on design | 1d | 2026-09-18 | 2026-09-18 | 20 |  |
| 23 | Compile Phase 2 design portfolio & reflection | 2d | 2026-09-21 | 2026-09-22 | 20, 21, 22 |  |
| 24 | Milestone: Phase 2 presentation - Assessment 2 (30%) | 1d | 2026-02-09 | 2026-02-09 | 23 |  |
| 25 | PHASE 3: Development, Integration & Evaluation (50%) | 25d | 2026-09-28 | 2026-10-30 | 2 |  |
| 26 | Development Sprint 1 (Flutter, ASP.NET, Supabase) | 5d | 2026-09-28 | 2026-10-02 | 24 |  |
| 27 | Institutional holiday / catch-up on outstanding work | 5d | 2026-10-05 | 2026-10-09 | 26 |  |
| 28 | Development Sprint 2 & integration | 5d | 2026-10-12 | 2026-10-16 | 26 |  |
| 29 | Manual testing, problem log & corrections | 5d | 2026-10-19 | 2026-10-23 | 28 |  |
| 30 | Stakeholder/user evaluation | 2d | 2026-10-21 | 2026-10-22 | 28 |  |
| 31 | Final GitHub release, MS Project report & group reflection | 2d | 2026-10-26 | 2026-10-27 | 29, 30 |  |
| 32 | Milestone: Final presentation, defence - Assessment 3 (50%) | 5d | 2026-10-26 | 2026-10-30 | 31 |  |

## Version 2 (saved 2026-10-25)

Note of the change: Uploading documentation for phase3

Last finish 2026-10-30 → 2026-10-28 (-2d).

Changed:

| ID | Task | Start | Finish | Duration | Other |
| --- | --- | --- | --- | --- | --- |
| 25 | PHASE 3: Development, Integration & Evaluation (50%) | 2026-09-28 → 2026-10-02 (+4d) | 2026-10-30 → 2026-10-25 (-5d) | 25d → 17d |  |
| 29 | Manual testing, problem log & corrections |  |  |  | resources Paballo Lebusa → All |
| 32 | Milestone: Final presentation, defence - Assessment 3 (50%) | 2026-10-26 → 2026-10-28 (+2d) | 2026-10-30 → 2026-10-28 (-2d) | 5d → 0d |  |
